# Diplôme - SLO - Santos

Schedule from GanttProject, 2023-08-21 to 2023-10-06, baseline: 2312_Initial.
ETML-ES
Travail de diplôme SLO / Miguel Santos / 2023

## Calendars

- Project calendar: Mon-Fri working; Sat-Sun off. Exceptions (off unless hours are given): 2023-09-18 (Jeûne Fédéral).

## Resources

| Resource | Group | Rate |
| --- | --- | --- |
| Miguel Santos |  | 35 |
| Serge Castoldi | Maître de diplôme |  |

## Schedule

| ID | WBS | Task | Type | Duration | Start | Finish | Predecessors | Baseline start | Baseline finish | Baseline duration | Constraint | Resources |
| --- | --- | --- | --- | --- | --- | --- | --- | --- | --- | --- | --- | --- |
| 1 | 1 | **Travail de diplôme** |  | 34d | 2023-08-21 | 2023-10-06 |  | 2023-08-21 | 2023-10-06 | 34d |  |  |
| 2 | 1.1 | Pré-étude |  | 2d | 2023-08-21 | 2023-08-22 |  | 2023-08-21 | 2023-08-22 | 2d |  | Miguel Santos |
| 3 | 1.2 | Schémas |  | 3d | 2023-08-23 | 2023-08-25 | 2 | 2023-08-23 | 2023-08-25 | 3d |  | Miguel Santos |
| 4 | 1.3 | Revue de schémas | milestone | 0d | 2023-08-28 | 2023-08-28 | 3 | 2023-08-28 | 2023-08-28 | 0d |  | Miguel Santos |
| 5 | 1.4 | PCB |  | 4d | 2023-08-28 | 2023-08-31 | 4 | 2023-08-28 | 2023-08-31 | 4d |  | Miguel Santos |
| 6 | 1.5 | Commandes |  | 1d | 2023-09-01 | 2023-09-01 | 5 | 2023-09-01 | 2023-09-01 | 1d |  | Miguel Santos |
| 7 | 1.6 | Réception PCB | milestone | 0d | 2023-09-08 | 2023-09-08 | 6 | 2023-09-08 | 2023-09-08 | 0d | start no earlier than 2023-09-08 | Miguel Santos |
| 8 | 1.7 | Montage |  | 1d | 2023-09-08 | 2023-09-08 | 7 | 2023-09-08 | 2023-09-08 | 1d |  | Miguel Santos |
| 9 | 1.8 | Software RPI |  | 4d | 2023-09-04 | 2023-09-07 | 6 | 2023-09-04 | 2023-09-07 | 4d |  |  |
| 10 | 1.9 | Firmware PCB |  | 5d | 2023-09-11 | 2023-09-15 | 8 | 2023-09-11 | 2023-09-15 | 5d |  | Miguel Santos |
| 11 | 1.10 | Mise en service |  | 11d | 2023-09-19 | 2023-10-03 | 10 | 2023-09-19 | 2023-10-03 | 11d |  | Miguel Santos |
| 12 | 1.11 | Documents |  | 31d | 2023-08-21 | 2023-10-03 |  | 2023-08-21 | 2023-10-03 | 31d |  | Miguel Santos |
| 13 | 1.12 | Remise des mémoires | milestone | 0d | 2023-09-26 | 2023-09-26 |  | 2023-09-26 | 2023-09-26 | 0d |  | Miguel Santos |
| 14 | 1.13 | Remise affiche et résumé | milestone | 0d | 2023-09-27 | 2023-09-27 |  | 2023-09-27 | 2023-09-27 | 0d |  | Miguel Santos |
| 15 | 1.14 | Portes ouvertes | milestone | 0d | 2023-09-29 | 2023-09-29 |  | 2023-09-29 | 2023-09-29 | 0d |  | Miguel Santos |
| 16 | 1.15 | Défense orale |  | 3d | 2023-10-04 | 2023-10-06 | 11 | 2023-10-04 | 2023-10-06 | 3d | start no earlier than 2023-10-04 | Miguel Santos |
